# FlexiTime

Schedule from GanttProject, 2005-01-04 to 2005-02-24.
FlexiTime
Gestion des emplois du Temps / Projet de Génie Logiciel / Informatique Réseaux 3° année / Ingénieurs 2000 - Université de Marne-La-Vallée

## Calendars

- Project calendar: Mon-Fri working; Sat-Sun off.

## Resources

| Resource | Group |
| --- | --- |
| Jérôme GUERS |  |
| Fabien APPERT | Secrétaire + Responsable Client |
| Adrien BOUVET | Site Web + Responsable Qualité |
| Valère FOREL | Responsable Développement & test |
| Guillaume GUERRIN | Responsable technique |
| Prâsad RAMASSAMY | Responsable Interface Graphique |

## Schedule

| ID | WBS | Task | Duration | Start | Finish | Complete | Resources |
| --- | --- | --- | --- | --- | --- | --- | --- |
| 1 | 1 | **Développement** | 30d | 2005-01-04 | 2005-02-14 | 1% |  |
| 2 | 1.1 | **Préparation des outils de travail** | 11d | 2005-01-04 | 2005-01-18 |  |  |
| 3 | 1.1.1 | Finition du FlexiGuide | 6d | 2005-01-04 | 2005-01-11 |  | Jérôme GUERS [20%] |
| 4 | 1.1.2 | Mise en place des serveurs | 4d | 2005-01-11 | 2005-01-14 |  | Adrien BOUVET |
| 5 | 1.2 | **flexitime.common** | 3d | 2005-01-04 | 2005-01-06 | 12% |  |
| 6 | 1.2.1 | **flexitime.common.data** | 3d | 2005-01-04 | 2005-01-06 |  |  |
| 7 | 1.2.1.1 | Dév flexitime.common.data | 3d | 2005-01-04 | 2005-01-06 |  | Adrien BOUVET |
| 8 | 1.2.1.2 | Test flexitime.common.data | 3d | 2005-01-04 | 2005-01-06 |  | Guillaume GUERRIN [50%] |
| 9 | 1.2.2 | **flexitime.common.tools** | 3d | 2005-01-04 | 2005-01-06 |  |  |
| 10 | 1.2.2.1 | Dev flexitime.common.tools | 3d | 2005-01-04 | 2005-01-06 |  | Valère FOREL |
| 11 | 1.2.2.2 | Test flexitime.common.tools | 3d | 2005-01-04 | 2005-01-06 |  | Guillaume GUERRIN [50%] |
| 12 | 1.2.3 | **flexitime.common.rmi** | 3d | 2005-01-04 | 2005-01-06 |  |  |
| 13 | 1.2.3.1 | Dev flexitime.common.rmi | 3d | 2005-01-04 | 2005-01-06 |  | Prâsad RAMASSAMY [30%] |
| 14 | 1.2.4 | **flexitime.common.event** | 3d | 2005-01-04 | 2005-01-06 | 44% |  |
| 15 | 1.2.4.1 | Dev flexitime.common.event | 3d | 2005-01-04 | 2005-01-06 | 90% | Prâsad RAMASSAMY [20%] |
| 16 | 1.2.4.2 | Test flexitime.common.event | 3d | 2005-01-04 | 2005-01-06 |  | Prâsad RAMASSAMY [20%] |
| 17 | 1.3 | **flexitime.server** | 22d | 2005-01-07 | 2005-02-07 |  |  |
| 18 | 1.3.1 | flexitime.server.main | 4d | 2005-01-22 | 2005-01-27 |  | Fabien APPERT |
| 19 | 1.3.2 | **flexitime.server.core** | 10d | 2005-01-07 | 2005-01-20 |  |  |
| 20 | 1.3.2.1 | Dev flexitime.server.core | 4d | 2005-01-11 | 2005-01-14 |  | Valère FOREL |
| 21 | 1.3.2.2 | Test flexitime.server.core | 4d | 2005-01-07 | 2005-01-12 |  | Adrien BOUVET |
| 22 | 1.3.2.3 | **flexitime.server.core.management** | 2d | 2005-01-15 | 2005-01-18 |  |  |
| 23 | 1.3.2.3.1 | Dev flexitime.server.core.management | 2d | 2005-01-15 | 2005-01-18 |  | Valère FOREL |
| 24 | 1.3.2.3.2 | Test flexitime.server.core.management | 2d | 2005-01-15 | 2005-01-18 |  | Adrien BOUVET |

Notes:
- 3: Modification des erreurs signalées / Recherche du plugin 1.5 / Ajout de parties éventuelles / Recherche du fonctionnement des TAGS SVN / Résolution des pb d'affichage ss eclipse / Finalisation du fichier project.xml / Intégration des librairie
- 4: PostGres / TomCat / ssh / LDAP

| ID | WBS | Task | Duration | Start | Finish | Resources |
| --- | --- | --- | --- | --- | --- | --- |
| 25 | 1.3.2.4 | **flexitime.server.core.admin** | 3d | 2005-01-07 | 2005-01-11 |  |
| 26 | 1.3.2.4.1 | Dev flexitime.server.core.admin | 3d | 2005-01-07 | 2005-01-11 | Guillaume GUERRIN [50%] |
| 27 | 1.3.2.4.2 | Test flexitime.server.core.admin | 3d | 2005-01-07 | 2005-01-11 | Guillaume GUERRIN [50%] |
| 28 | 1.3.3 | **flexitime.server.io** | 22d | 2005-01-07 | 2005-02-07 |  |
| 29 | 1.3.3.1 | **flexitime.server.io.FlexiLDAP** | 3d | 2005-01-10 | 2005-01-12 |  |
| 30 | 1.3.3.1.1 | Test flexitime.server.io.FlexiLDAP | 3d | 2005-01-10 | 2005-01-12 | Guillaume GUERRIN [50%] |
| 31 | 1.3.3.2 | **flexitime.server.io.FlexiFOP** | 7d | 2005-01-22 | 2005-02-01 |  |
| 32 | 1.3.3.2.1 | Dev flexitime.server.io.FlexiFOP | 4d | 2005-01-22 | 2005-01-27 | Guillaume GUERRIN |
| 33 | 1.3.3.2.2 | XSLT flexitime.server.io.FlexiFOP | 3d | 2005-01-26 | 2005-01-28 | Jérôme GUERS [30%] |
| 34 | 1.3.3.2.3 | Test flexitime.server.io.FlexiFOP | 4d | 2005-01-22 | 2005-01-27 | Valère FOREL [50%] |
| 35 | 1.3.3.3 | **flexitime.server.io.FleXML** | 4d | 2005-01-22 | 2005-01-27 |  |
| 36 | 1.3.3.3.1 | Dev flexitime.server.io.FleXML | 4d | 2005-01-22 | 2005-01-27 | Jérôme GUERS [30%] |
| 37 | 1.3.3.3.2 | Test flexitime.server.io.FleXML | 4d | 2005-01-22 | 2005-01-27 | Adrien BOUVET |
| 38 | 1.3.3.4 | **flexitime.server.io.FlexiPrint** | 4d | 2005-01-07 | 2005-01-12 |  |
| 39 | 1.3.3.4.1 | Test flexitime.server.io.FlexiPrint | 4d | 2005-01-07 | 2005-01-12 | Valère FOREL [50%] |
| 40 | 1.3.3.5 | **flexitime.server.io.FlexiMail** | 4d | 2005-01-07 | 2005-01-12 |  |
| 41 | 1.3.3.5.1 | Test flexitime.server.io.FlexiMail | 4d | 2005-01-07 | 2005-01-12 | Valère FOREL [50%] |
| 42 | 1.3.3.6 | **flexitime.server.io.storage** | 10d | 2005-01-07 | 2005-01-20 |  |
| 43 | 1.3.3.6.1 | Dev flexitime.server.io.storage | 6d | 2005-01-07 | 2005-01-14 | Prâsad RAMASSAMY |
| 44 | 1.3.3.6.2 | Test flexitime.server.io.storage | 6d | 2005-01-11 | 2005-01-18 | Fabien APPERT |
| 45 | 1.4 | **flexitime.richClient** | 18d | 2005-01-04 | 2005-01-27 |  |
| 46 | 1.4.1 | flexitime.richClient.main | 4d | 2005-01-13 | 2005-01-18 | Prâsad RAMASSAMY |
| 47 | 1.4.2 | **flexitime.richClient.models** | 5d | 2005-01-17 | 2005-01-21 |  |
| 48 | 1.4.2.1 | Dev flexitime.richClient.models | 5d | 2005-01-17 | 2005-01-21 | Fabien APPERT |
| 49 | 1.4.2.2 | Test flexitime.richClient.models | 5d | 2005-01-17 | 2005-01-21 | Prâsad RAMASSAMY |

| ID | WBS | Task | Duration | Start | Finish | Complete | Resources |
| --- | --- | --- | --- | --- | --- | --- | --- |
| 50 | 1.4.3 | **flexitime.richClient.gui** | 18d | 2005-01-04 | 2005-01-27 |  |  |
| 51 | 1.4.3.1 | flexitime.richClient.gui.actions | 4d | 2005-01-13 | 2005-01-18 |  | Guillaume GUERRIN |
| 52 | 1.4.3.2 | **flexitime.richClient.gui.panel** | 18d | 2005-01-04 | 2005-01-27 |  |  |
| 53 | 1.4.3.2.1 | flexitime.richClient.gui.panel.management | 5d | 2005-01-17 | 2005-01-21 |  | Guillaume GUERRIN |
| 54 | 1.4.3.2.2 | flexitime.richClient.gui.panel.exploitation | 7d | 2005-01-04 | 2005-01-12 |  | Fabien APPERT |
| 55 | 1.4.3.3 | flexitime.richClient.gui.views | 5d | 2005-01-17 | 2005-01-21 |  | Adrien BOUVET |
| 56 | 1.5 | flexitime.ligthClient | 5d | 2005-01-17 | 2005-01-21 |  | Valère FOREL |
| 57 | 1.6 | **Validation de l'avancement et du fonctionnement** | 30d | 2005-01-04 | 2005-02-14 | 3% |  |
| 58 | 1.6.1 | Mise en place du suivi sur Wiki | 2d | 2005-01-04 | 2005-01-05 | 100% | Jérôme GUERS [50%] |
| 59 | 1.6.2 | Validation des tests et de l'avancement | 24d | 2005-01-10 | 2005-02-10 |  | Jérôme GUERS [50%] |
| 60 | 1.6.3 | **Rédaction des fiches de bugs** | 5d | 2005-01-29 | 2005-02-04 |  |  |
| 61 | 1.6.3.1 | Fonctions génériques | 5d | 2005-01-29 | 2005-02-04 |  | Adrien BOUVET |
| 62 | 1.6.3.2 | Mode Gestion | 5d | 2005-01-29 | 2005-02-04 |  | Guillaume GUERRIN |
| 63 | 1.6.3.3 | Mode Exploitation | 5d | 2005-01-29 | 2005-02-04 |  | Fabien APPERT; Valère FOREL |
| 64 | 1.6.3.4 | Mode Historique | 5d | 2005-01-29 | 2005-02-04 |  | Prâsad RAMASSAMY |
| 65 | 2 | Correction et mise en forme | 13d | 2005-02-08 | 2005-02-24 |  |  |
